# Customer Service Ramp Up

Schedule from MS Project, 2007-01-01 to 2007-04-05.

## Calendars

- Standard: Mon-Fri 08:00-12:00, 13:00-17:00; Sat-Sun off.

## Resources

| Resource |
| --- |
| Customer Service Team |
| Customer Service Lead |
| Technology Lead |
| Content Developer |
| Trainer |
| Logistics |

## Schedule

| ID | WBS | Task | Type | Duration | Start | Finish | Predecessors | Total slack | Resources | Work |
| --- | --- | --- | --- | --- | --- | --- | --- | --- | --- | --- |
| 1 | 1 | Read the note for an explanation of the purpose of the template | milestone | 0d | 2007-01-01 | 2007-01-01 |  | 0d |  |  |
| 2 | 2 | **Initial Assessment** |  | 5d? | 2007-01-01 | 2007-01-05 |  | 0d |  | 40h |
| 3 | 2.1 | **Perform Product Review** |  | 5d? | 2007-01-01 | 2007-01-05 |  | 0d |  | 40h |
| 4 | 2.1.1 | Identify typical product usage scenarios |  | 1d? | 2007-01-01 | 2007-01-01 | 1 | 0d | Customer Service Team | 8h |
| 5 | 2.1.2 | Identify typical customer types |  | 1d? | 2007-01-02 | 2007-01-02 | 4 | 0d | Customer Service Team | 8h |
| 6 | 2.1.3 | Identify anticipated product problem points |  | 1d? | 2007-01-03 | 2007-01-03 | 5 | 0d | Customer Service Team | 8h |
| 7 | 2.1.4 | Determine solutions for product points |  | 1d? | 2007-01-04 | 2007-01-04 | 6 | 0d | Customer Service Team | 8h |
| 8 | 2.1.5 | Document product review results |  | 1d? | 2007-01-05 | 2007-01-05 | 7 | 0d | Customer Service Team | 8h |
| 9 | 2.1.6 | Product Review COMPLETE | milestone | 0d | 2007-01-05 | 2007-01-05 | 8 | 0d |  |  |
| 10 | 3 | **Service Planning** |  | 5d? | 2007-01-08 | 2007-01-12 |  | 0d |  | 48h |
| 11 | 3.1 | **Design Support Services** |  | 4d? | 2007-01-08 | 2007-01-11 |  | 0d |  | 48h |
| 12 | 3.1.1 | **Design Customer Service Contact Scenarios** |  | 1d? | 2007-01-08 | 2007-01-08 |  | 0d |  | 24h |
| 13 | 3.1.1.1 | Online support |  | 1d? | 2007-01-08 | 2007-01-08 | 9 | 0d | Customer Service Team | 8h |
| 14 | 3.1.1.2 | Phone support |  | 1d? | 2007-01-08 | 2007-01-08 | 9 | 0d | Customer Service Team | 8h |
| 15 | 3.1.1.3 | On-site support |  | 1d? | 2007-01-08 | 2007-01-08 | 9 | 0d | Customer Service Team | 8h |
| 16 | 3.1.1.4 | Design of customer service contact scenarios COMPLETE | milestone | 0d | 2007-01-08 | 2007-01-08 | 15, 13, 14 | 0d |  |  |
| 17 | 3.1.2 | **Develop Levels of Customer Service (Free and Paid)** |  | 3d? | 2007-01-09 | 2007-01-11 |  | 0d |  | 24h |
| 18 | 3.1.2.1 | Identify types of problems to be solved |  | 1d? | 2007-01-09 | 2007-01-09 | 16 | 0d | Customer Service Team | 8h |
| 19 | 3.1.2.2 | Identify service delivery options |  | 1d? | 2007-01-10 | 2007-01-10 | 18 | 0d | Customer Service Team | 8h |
| 20 | 3.1.2.3 | Determine required skill sets for various support options |  | 1d? | 2007-01-11 | 2007-01-11 | 19 | 0d | Customer Service Team | 8h |
| 21 | 3.1.2.4 | Customer Service Level Design COMPLETE | milestone | 0d | 2007-01-11 | 2007-01-11 | 20 | 0d |  |  |
| 22 | 3.1.3 | Design of Support Services COMPLETE | milestone | 0d | 2007-01-11 | 2007-01-11 | 21 | 0d |  |  |
| 23 | 3.2 | Service Planning & Design COMPLETE |  | 1d? | 2007-01-12 | 2007-01-12 | 22 | 0d |  |  |
| 24 | 4 | **Service Delivery Infrastructure Planning** |  | 34.5d? | 2007-01-08 | 2007-02-23 |  | 5d |  | 256h |
| 25 | 4.1 | **Resources Requirements** |  | 3d? | 2007-01-15 | 2007-01-17 |  | 0d |  | 24h |
| 26 | 4.1.1 | Estimate demand for customer support (all options) |  | 1d? | 2007-01-15 | 2007-01-15 | 23 | 0d | Customer Service Lead | 8h |
| 27 | 4.1.2 | Estimate resource requirements |  | 1d? | 2007-01-16 | 2007-01-16 | 26 | 0d | Customer Service Lead | 8h |
| 28 | 4.1.3 | Estimate effort to hire new resources |  | 1d? | 2007-01-17 | 2007-01-17 | 27 | 0d | Customer Service Lead | 8h |
| 29 | 4.1.4 | Resource Planning COMPLETE | milestone | 0d | 2007-01-17 | 2007-01-17 | 28 | 0d |  |  |

Notes:
- 1: The purpose of this template is to support a customer service organization in setting up for the support of a new product. This is a complex topic that could require several schedules to cover all of the components. For simplicity, some of the areas have been noted with only one task, and will need to be developed in greater detail in separate plans. Technology infrastructure is one example of this. We recommend that a separate schedule be created for the development of the technology to support the introduction of a new product. There are several examples of technology templates available for this purpose.

| ID | WBS | Task | Type | Duration | Start | Finish | Predecessors | Total slack | Resources | Work |
| --- | --- | --- | --- | --- | --- | --- | --- | --- | --- | --- |
| 30 | 4.2 | **Training & Readiness** |  | 34.5d? | 2007-01-08 | 2007-02-23 |  | 0d |  | 216h |
| 31 | 4.2.1 | **Training Needs Assessment** |  | 9.5d? | 2007-01-08 | 2007-01-19 |  | 0d |  | 24h |
| 32 | 4.2.1.1 | Review output of product review phase |  | 1d? | 2007-01-08 | 2007-01-08 | 9 | 8d | Content Developer | 8h |
| 33 | 4.2.1.2 | Review anticipated skill sets of support resources |  | 1d? | 2007-01-18 | 2007-01-18 | 29 | 0d | Content Developer | 8h |
| 34 | 4.2.1.3 | Determine product-specific training needs |  | 0.5d? | 2007-01-19 | 2007-01-19 | 33, 32 | 0d | Content Developer; Customer Service Lead | 8h |
| 35 | 4.2.1.4 | Training Needs Assessment COMPLETE | milestone | 0d | 2007-01-19 | 2007-01-19 | 34 | 0d |  |  |
| 36 | 4.2.2 | **Training Planning** |  | 25d? | 2007-01-19 | 2007-02-23 |  | 0d |  | 192h |
| 37 | 4.2.2.1 | **Content Development Planning** |  | 8d? | 2007-01-19 | 2007-01-31 |  | 0d |  | 64h |
| 38 | 4.2.2.1.1 | Determine methods for delivering training |  | 1d? | 2007-01-19 | 2007-01-22 | 35 | 0d | Content Developer | 8h |
| 39 | 4.2.2.1.2 | Determine form factor for training content |  | 1d? | 2007-01-22 | 2007-01-23 | 38 | 0d | Content Developer | 8h |
| 40 | 4.2.2.1.3 | Identify internal resources that can review training materials |  | 1d? | 2007-01-23 | 2007-01-24 | 39 | 0d | Customer Service Lead | 8h |
| 41 | 4.2.2.1.4 | Determine training course topics |  | 1d? | 2007-01-24 | 2007-01-25 | 40 | 0d | Content Developer | 8h |
| 42 | 4.2.2.1.5 | Determine number of training courses |  | 1d? | 2007-01-25 | 2007-01-26 | 41 | 0d | Content Developer | 8h |
| 43 | 4.2.2.1.6 | Design student materials |  | 1d? | 2007-01-26 | 2007-01-29 | 42 | 0d | Content Developer | 8h |
| 44 | 4.2.2.1.7 | Draft description of training program/courses |  | 1d? | 2007-01-29 | 2007-01-30 | 43 | 0d | Content Developer | 8h |
| 45 | 4.2.2.1.8 | Draft content development budget |  | 1d? | 2007-01-30 | 2007-01-31 | 44 | 0d | Content Developer | 8h |
| 46 | 4.2.2.1.9 | Content Development Planning COMPLETE | milestone | 0d | 2007-01-31 | 2007-01-31 | 45 | 0d |  |  |
| 47 | 4.2.2.2 | **Training Delivery Planning** |  | 14d? | 2007-01-31 | 2007-02-20 |  | 0d |  | 104h |
| 48 | 4.2.2.2.1 | **Assess Trainer Needs & Options** |  | 8d? | 2007-01-31 | 2007-02-12 |  | 0d |  | 64h |
| 49 | 4.2.2.2.1.1 | Identify internal resources that can serve as potential trainers |  | 1d? | 2007-01-31 | 2007-02-01 | 46 | 0d | Customer Service Lead | 8h |
| 50 | 4.2.2.2.1.2 | Determine whether additional trainers will be needed |  | 1d? | 2007-02-01 | 2007-02-02 | 49 | 0d | Customer Service Lead | 8h |
| 51 | 4.2.2.2.1.3 | **Review Outsourcing Options - Training Delivery** |  | 6d? | 2007-02-02 | 2007-02-12 |  | 0d |  | 48h |
| 52 | 4.2.2.2.1.3.1 | Review expertise of potential vendors |  | 1d? | 2007-02-02 | 2007-02-05 | 50 | 0d | Customer Service Lead | 8h |
| 53 | 4.2.2.2.1.3.2 | Review cost |  | 1d? | 2007-02-05 | 2007-02-06 | 52 | 0d | Customer Service Lead | 8h |
| 54 | 4.2.2.2.1.3.3 | Review service levels |  | 1d? | 2007-02-06 | 2007-02-07 | 53 | 0d | Customer Service Lead | 8h |
| 55 | 4.2.2.2.1.3.4 | Review customer references |  | 1d? | 2007-02-07 | 2007-02-08 | 54 | 0d | Customer Service Lead | 8h |
| 56 | 4.2.2.2.1.3.5 | Determine time required to ready external trainers |  | 1d? | 2007-02-08 | 2007-02-09 | 55 | 0d | Customer Service Lead | 8h |
| 57 | 4.2.2.2.1.3.6 | Make outsourcing decision |  | 1d? | 2007-02-09 | 2007-02-12 | 56 | 0d | Customer Service Lead | 8h |
| 58 | 4.2.2.2.1.3.7 | Outsourcing Review COMPLETE | milestone | 0d | 2007-02-12 | 2007-02-12 | 57 | 0d |  |  |
| 59 | 4.2.2.2.1.4 | Trainer Needs Assessment COMPLETE | milestone | 0d | 2007-02-12 | 2007-02-12 | 58 | 0d |  |  |

| ID | WBS | Task | Type | Duration | Start | Finish | Predecessors | Total slack | Free slack | Resources | Work |
| --- | --- | --- | --- | --- | --- | --- | --- | --- | --- | --- | --- |
| 60 | 4.2.2.2.2 | **Training Delivery Logistics** |  | 5d? | 2007-02-12 | 2007-02-19 |  | 0d |  |  | 32h |
| 61 | 4.2.2.2.2.1 | Create training delivery schedule |  | 1d? | 2007-02-12 | 2007-02-13 | 59 | 0d |  | Customer Service Lead | 8h |
| 62 | 4.2.2.2.2.2 | Determine training delivery locations |  | 1d? | 2007-02-13 | 2007-02-14 | 61 | 0d |  | Customer Service Lead | 8h |
| 63 | 4.2.2.2.2.3 | Review outsourcing options - event logistics |  | 1d? | 2007-02-14 | 2007-02-15 | 62 | 0d |  | Customer Service Lead | 8h |
| 64 | 4.2.2.2.2.4 | Develop training delivery budget |  | 1d? | 2007-02-15 | 2007-02-16 | 63 | 0d |  | Customer Service Lead | 8h |
| 65 | 4.2.2.2.2.5 | Training Delivery Logistics COMPLETE |  | 1d? | 2007-02-16 | 2007-02-19 | 64 | 0d |  |  |  |
| 66 | 4.2.2.2.3 | Create training plan with outputs of Content Development & Training Delivery Phases |  | 1d? | 2007-02-19 | 2007-02-20 | 65 | 0d |  | Customer Service Lead | 8h |
| 67 | 4.2.2.2.4 | Training Delivery Planning Complete | milestone | 0d | 2007-02-20 | 2007-02-20 | 66 | 0d |  |  |  |
| 68 | 4.2.2.3 | **Finalize Training Planning** |  | 3d? | 2007-02-20 | 2007-02-23 |  | 0d |  |  | 24h |
| 69 | 4.2.2.3.1 | Draft Overall Budget |  | 1d? | 2007-02-20 | 2007-02-21 | 67 | 0d |  | Customer Service Lead | 8h |
| 70 | 4.2.2.3.2 | Acquire executive sign-off on budget |  | 1d | 2007-02-21 | 2007-02-22 | 69 | 0d |  | Customer Service Lead | 8h |
| 71 | 4.2.2.3.3 | Acquire executive sign-off on training plans |  | 1d | 2007-02-22 | 2007-02-23 | 70 | 0d |  | Customer Service Lead | 8h |
| 72 | 4.2.2.4 | Training Planning COMPLETE | milestone | 0d | 2007-02-23 | 2007-02-23 | 71 | 0d |  |  |  |
| 73 | 4.3 | **Technology Infrastructure** |  | 2d? | 2007-01-15 | 2007-01-16 |  | 43.5d |  |  | 16h |
| 74 | 4.3.1 | Build technology infrastructure plan (separate project plan required) |  | 1d? | 2007-01-15 | 2007-01-15 | 23 | 43.5d | 0d | Technology Lead | 8h |
| 75 | 4.3.2 | Determine technology budget |  | 1d? | 2007-01-16 | 2007-01-16 | 74 | 43.5d | 0d | Technology Lead | 8h |
| 76 | 4.3.3 | Technology infrastructure planning COMPLETE | milestone | 0d | 2007-01-16 | 2007-01-16 | 75 | 43.5d | 0d |  |  |
| 77 | 4.4 | Service Delivery Planning COMPLETE | milestone | 0d | 2007-01-16 | 2007-01-16 | 76 | 56.5d |  |  |  |
| 78 | 5 | **Business Performance Planning** |  | 3d? | 2007-01-12 | 2007-01-16 |  | 51.5d |  |  | 24h |
| 79 | 5.1 | Determine business objectives of support services |  | 1d? | 2007-01-12 | 2007-01-12 | 22 | 51.5d | 0d | Customer Service Lead | 8h |
| 80 | 5.2 | Determine success metrics |  | 1d? | 2007-01-15 | 2007-01-15 | 79 | 51.5d | 0d | Customer Service Team | 8h |
| 81 | 5.3 | Determine cost efficiency standards |  | 1d? | 2007-01-16 | 2007-01-16 | 80 | 51.5d | 0d | Customer Service Team | 8h |
| 82 | 5.4 | Business Performance Planning COMPLETE | milestone | 0d | 2007-01-16 | 2007-01-16 | 81 | 51.5d | 0d |  |  |
| 83 | 6 | **Build Customer Service Program** |  | 43.5d? | 2007-01-17 | 2007-03-19 |  | 13d |  |  | 200h |
| 84 | 6.1 | **Training/Readiness Development** |  | 16d? | 2007-02-23 | 2007-03-19 |  | 0d |  |  | 128h |
| 85 | 6.1.1 | **Training Content Development** |  | 9d? | 2007-02-23 | 2007-03-08 |  | 0d |  |  | 72h |
| 86 | 6.1.1.1 | Assemble content development team |  | 1d? | 2007-02-23 | 2007-02-26 | 72 | 0d |  | Customer Service Lead | 8h |
| 87 | 6.1.1.2 | Define roles and responsibilities |  | 1d? | 2007-02-26 | 2007-02-27 | 86 | 0d |  | Customer Service Lead | 8h |
| 88 | 6.1.1.3 | Create content development schedule |  | 1d? | 2007-02-27 | 2007-02-28 | 87 | 0d |  | Customer Service Lead | 8h |

| ID | WBS | Task | Type | Duration | Start | Finish | Predecessors | Total slack | Free slack | Resources | Work |
| --- | --- | --- | --- | --- | --- | --- | --- | --- | --- | --- | --- |
| 89 | 6.1.1.4 | **Build Training Content** |  | 6d? | 2007-02-28 | 2007-03-08 |  | 0d |  |  | 48h |
| 90 | 6.1.1.4.1 | Review existing intellectual property |  | 1d? | 2007-02-28 | 2007-03-01 | 88 | 0d |  | Content Developer | 8h |
| 91 | 6.1.1.4.2 | Develop beta content |  | 1d? | 2007-03-01 | 2007-03-02 | 90 | 0d |  | Content Developer | 8h |
| 92 | 6.1.1.4.3 | Perform SME review of training content |  | 1d? | 2007-03-02 | 2007-03-05 | 91 | 0d |  | Content Developer | 8h |
| 93 | 6.1.1.4.4 | Revise and update content |  | 1d? | 2007-03-05 | 2007-03-06 | 92 | 0d |  | Content Developer | 8h |
| 94 | 6.1.1.4.5 | Create "cheat sheets" and additional learning resources for customer support |  | 1d? | 2007-03-06 | 2007-03-07 | 93 | 0d |  | Content Developer | 8h |
| 95 | 6.1.1.4.6 | Acquire final content approval |  | 1d? | 2007-03-07 | 2007-03-08 | 94 | 0d |  | Customer Service Lead | 8h |
| 96 | 6.1.1.5 | Content Development COMPLETE | milestone | 0d | 2007-03-08 | 2007-03-08 | 95 | 0d |  |  |  |
| 97 | 6.1.2 | **Develop Training Delivery Engine** |  | 7d? | 2007-03-08 | 2007-03-19 |  | 0d |  |  | 56h |
| 98 | 6.1.2.1 | Create additional "train the trainer" learning materials |  | 1d? | 2007-03-08 | 2007-03-09 | 96 | 0d |  | Content Developer | 8h |
| 99 | 6.1.2.2 | Create proficiency exams |  | 1d? | 2007-03-09 | 2007-03-12 | 98 | 0d |  | Content Developer | 8h |
| 100 | 6.1.2.3 | Train additional trainers |  | 1d? | 2007-03-12 | 2007-03-13 | 99 | 0d |  | Trainer | 8h |
| 101 | 6.1.2.4 | Prepare training venues |  | 1d? | 2007-03-13 | 2007-03-14 | 100 | 0d |  | Logistics | 8h |
| 102 | 6.1.2.5 | Create communications plan |  | 1d? | 2007-03-14 | 2007-03-15 | 101 | 0d |  | Customer Service Lead | 8h |
| 103 | 6.1.2.6 | Provide new hires with information on training program |  | 1d? | 2007-03-15 | 2007-03-16 | 102 | 0d |  | Customer Service Lead | 8h |
| 104 | 6.1.2.7 | Send out communication to existing support resources regarding new training plan |  | 1d? | 2007-03-16 | 2007-03-19 | 103 | 0d |  | Customer Service Lead | 8h |
| 105 | 6.1.2.8 | Training Delivery Engine Development COMPLETE | milestone | 0d | 2007-03-19 | 2007-03-19 | 104 | 0d |  |  |  |
| 106 | 6.1.3 | Training/Readiness Development COMPLETE | milestone | 0d | 2007-03-19 | 2007-03-19 | 105 | 13d |  |  |  |
| 107 | 6.2 | **Build Technology Infrastructure** |  | 2d? | 2007-01-17 | 2007-01-18 |  | 43.5d |  |  | 32h |
| 108 | 6.2.1 | Design and develop technology solution (separate schedule required) |  | 1d? | 2007-01-17 | 2007-01-17 | 76 | 43.5d | 0d | Technology Lead | 8h |
| 109 | 6.2.2 | Test technology infrastructure |  | 1d? | 2007-01-18 | 2007-01-18 | 108 | 43.5d | 0d | Customer Service Team; Technology Lead; Content Developer | 24h |
| 110 | 6.2.3 | Technology Infrastructure Development COMPLETE | milestone | 0d | 2007-01-18 | 2007-01-18 | 109 | 54.5d |  |  |  |
| 111 | 6.3 | **Customer Service Program Development** |  | 5d? | 2007-01-17 | 2007-01-23 |  | 51.5d |  |  | 40h |
| 112 | 6.3.1 | Build customer service programs |  | 1d? | 2007-01-17 | 2007-01-17 | 82 | 51.5d | 0d | Customer Service Team | 8h |
| 113 | 6.3.2 | Perform subject matter expert review |  | 1d? | 2007-01-18 | 2007-01-18 | 112 | 51.5d | 0d | Customer Service Team | 8h |
| 114 | 6.3.3 | Perform user acceptance testing with customers |  | 1d? | 2007-01-19 | 2007-01-19 | 113 | 51.5d | 0d | Customer Service Team | 8h |
| 115 | 6.3.4 | Revise programs and related processes |  | 1d? | 2007-01-22 | 2007-01-22 | 114 | 51.5d | 0d | Customer Service Team | 8h |
| 116 | 6.3.5 | Acquire executive sign-off |  | 1d? | 2007-01-23 | 2007-01-23 | 115 | 51.5d | 0d | Customer Service Lead | 8h |
| 117 | 6.3.6 | Customer Service Program Development COMPLETE | milestone | 0d | 2007-01-23 | 2007-01-23 | 116 | 51.5d |  |  |  |

| ID | WBS | Task | Type | Duration | Start | Finish | Predecessors | Total slack | Resources | Work |
| --- | --- | --- | --- | --- | --- | --- | --- | --- | --- | --- |
| 118 | 7 | **Program Deployment** |  | 45.5d? | 2007-01-19 | 2007-03-23 |  | 9d |  | 40h |
| 119 | 7.1 | **Resource Readiness** |  | 3d? | 2007-03-19 | 2007-03-22 |  | 0d |  | 24h |
| 120 | 7.1.1 | Hire new resources |  | 1d? | 2007-03-19 | 2007-03-20 | 95, 105 | 0d | Customer Service Lead | 8h |
| 121 | 7.1.2 | Train new resources |  | 1d? | 2007-03-20 | 2007-03-21 | 120 | 0d | Trainer | 8h |
| 122 | 7.1.3 | Certify new resources |  | 1d? | 2007-03-21 | 2007-03-22 | 121 | 0d | Customer Service Lead | 8h |
| 123 | 7.1.4 | Resource Readiness Training COMPLETE | milestone | 0d | 2007-03-22 | 2007-03-22 | 122 | 10d |  |  |
| 124 | 7.2 | Deploy technology infrastructure |  | 1d? | 2007-01-19 | 2007-01-19 | 109 | 43.5d | Technology Lead | 8h |
| 125 | 7.3 | Deploy new customer service programs |  | 1d? | 2007-03-22 | 2007-03-23 | 124, 122 | 0d | Customer Service Lead | 8h |
| 126 | 7.4 | Program Deployment COMPLETE | milestone | 0d | 2007-03-23 | 2007-03-23 | 125 | 0d |  |  |
| 127 | 8 | **Post Launch** |  | 9d? | 2007-03-23 | 2007-04-05 |  | 0d |  | 72h |
| 128 | 8.1 | **Engage in Post Launch Preparation Activities** |  | 4d? | 2007-03-23 | 2007-03-29 |  | 0d |  | 32h |
| 129 | 8.1.1 | Determine success metrics |  | 1d? | 2007-03-23 | 2007-03-26 | 126 | 0d | Customer Service Team | 8h |
| 130 | 8.1.2 | Create method for tracking common problems and solutions |  | 1d? | 2007-03-26 | 2007-03-27 | 129 | 0d | Customer Service Team | 8h |
| 131 | 8.1.3 | Create method to track support issues vs. product aspects |  | 1d? | 2007-03-27 | 2007-03-28 | 130 | 0d | Customer Service Team | 8h |
| 132 | 8.1.4 | Create method for distributing common solutions to all support resources |  | 1d? | 2007-03-28 | 2007-03-29 | 131 | 0d | Customer Service Team | 8h |
| 133 | 8.1.5 | Post Launch Preparation COMPLETE | milestone | 0d | 2007-03-29 | 2007-03-29 | 132 | 0d |  |  |
| 134 | 8.2 | **Monitoring** |  | 5d? | 2007-03-29 | 2007-04-05 |  | 0d |  | 40h |
| 135 | 8.2.1 | Monitor customer support issues - look for common problems |  | 1d? | 2007-03-29 | 2007-03-30 | 133 | 0d | Customer Service Team | 8h |
| 136 | 8.2.2 | Aggregate best practices (solutions) - distribute to support services |  | 1d? | 2007-03-30 | 2007-04-02 | 135 | 0d | Customer Service Team | 8h |
| 137 | 8.2.3 | Review support data, determine which product aspects cause the most support incidents |  | 1d? | 2007-04-02 | 2007-04-03 | 136 | 0d | Customer Service Team | 8h |
| 138 | 8.2.4 | Review resource performance, determine which ones are the most effective |  | 1d? | 2007-04-03 | 2007-04-04 | 137 | 0d | Customer Service Team | 8h |
| 139 | 8.2.5 | Revise training materials based on data collected from customer service program |  | 1d? | 2007-04-04 | 2007-04-05 | 138 | 0d | Content Developer | 8h |
| 140 | 8.3 | Post Launch Activities COMPLETE | milestone | 0d | 2007-04-05 | 2007-04-05 | 139 | 0d |  |  |
| 141 | 9 | Customer Service Program Development COMPLETE | milestone | 0d | 2007-04-05 | 2007-04-05 | 140 | 0d |  |  |
